Task_ID,Parent_Task_ID,Task_Name,Owner,Status,Actual_Start,Actual_End,Planned_Start,Planned_End,Dependency,Milestone,Schedule_Basis
G-001,,저장소 초기화,공동 또는 확인 필요,DONE,2026-06-08 09:00,2026-06-08 18:00,,,-,N,GIT_LOG
G-002,,Spring Boot 4 및 Java 25 기반 구축,팀원 A,DONE,2026-06-19 09:00,2026-06-22 18:00,,,"G-001",N,GIT_LOG
G-003,,DB Schema Mapper Service 기반 구축,팀원 A,DONE,2026-06-19 09:00,2026-06-21 18:00,,,"G-002",N,GIT_LOG
G-004,,공통 예외 응답 검증 기반,공동 또는 확인 필요,DONE,2026-06-19 09:00,2026-06-21 18:00,,,"G-002",N,CODE_EVIDENCE
G-005,,Swagger OpenAPI 도입 검토,공동 또는 확인 필요,NOT_STARTED,,,2026-06-25 15:00,2026-06-25 17:00,"G-004",N,ASSUMPTION
G-101,,회원 인증 Service 구현,팀원 A,DONE,2026-06-19 09:00,2026-06-19 18:00,,,"G-003",N,GIT_LOG
G-102,,회원 API Controller와 DTO 연결,팀원 B,DONE,2026-06-21 09:00,2026-06-21 18:00,,,"G-101",N,GIT_LOG
G-103,,JSP 회원 로그인 마이페이지 구현,팀원 B,DONE,2026-06-21 09:00,2026-06-21 18:00,,,"G-101",N,GIT_LOG
G-104,,러닝 프로필 JSP API 구현,공동 또는 확인 필요,DONE,2026-06-21 09:00,2026-06-24 18:00,,,"G-101",N,GIT_LOG
G-105,,JSP Vue 인증 복귀 수동 검증,팀원 B,UNVERIFIED,,,2026-06-25 15:00,2026-06-25 21:00,"G-102;G-103",N,ASSUMPTION
G-106,,Vue 전용 러닝 프로필 화면 후속 통합 과제 확정,팀원 B,DONE,2026-06-25 17:00,2026-06-25 17:00,2026-06-25 17:00,2026-06-25 17:00,"G-104",Y,PROJECT_DOCUMENT
G-201,,음악 DB Service Mapper 구현,팀원 A,DONE,2026-06-19 09:00,2026-06-19 18:00,,,"G-003",N,GIT_LOG
G-202,,음악 리뷰 Service 구현,팀원 A,DONE,2026-06-19 09:00,2026-06-19 18:00,,,"G-201",N,GIT_LOG
G-203,,음악 API와 Vue 화면 연결,팀원 B,DONE,2026-06-21 09:00,2026-06-22 18:00,,,"G-201;G-601",N,GIT_LOG
G-204,,리뷰 API와 Vue 컴포넌트 연결,팀원 B,DONE,2026-06-21 09:00,2026-06-22 18:00,,,"G-202;G-601",N,CODE_EVIDENCE
G-205,,내부 음악 관리 권한 정책 확인,공동 또는 확인 필요,UNVERIFIED,,,2026-06-25 15:00,2026-06-25 18:00,"G-203",N,ASSUMPTION
G-206,,리뷰 브라우저 검증,팀원 B,UNVERIFIED,,,2026-06-25 18:00,2026-06-25 21:00,"G-204",N,ASSUMPTION
G-301,,플레이리스트와 수록곡 Service 구현,팀원 A,DONE,2026-06-19 09:00,2026-06-19 18:00,,,"G-003;G-201",N,GIT_LOG
G-302,,플레이리스트 저장 Service 구현,팀원 A,DONE,2026-06-19 09:00,2026-06-20 18:00,,,"G-301",N,GIT_LOG
G-303,,플레이리스트 API 화면 수록곡 관리,팀원 B,DONE,2026-06-22 09:00,2026-06-24 18:00,,,"G-301;G-601",N,GIT_LOG
G-304,,추천 결과 저장 연결,공동 또는 확인 필요,DONE,2026-06-22 09:00,2026-06-25 18:00,,,"G-303;G-403",N,GIT_LOG
G-305,,수록곡 순서와 저장 흐름 수동 검증,공동 또는 확인 필요,UNVERIFIED,,,2026-06-25 18:00,2026-06-25 22:00,"G-303;G-304",N,ASSUMPTION
G-401,,러닝 기록 세션 참여 Service 구현,팀원 A,DONE,2026-06-20 09:00,2026-06-21 18:00,,,"G-003;G-101",N,GIT_LOG
G-402,,러닝 API와 Vue 화면 구현,팀원 B,DONE,2026-06-22 09:00,2026-06-24 18:00,,,"G-401;G-601",N,GIT_LOG
G-403,,케이던스 심박 운동 강도 추천 구현,팀원 A,DONE,2026-06-19 09:00,2026-06-23 18:00,,,"G-201;G-401",N,GIT_LOG
G-404,,AI 러닝 리포트 구현,공동 또는 확인 필요,DONE,2026-06-24 09:00,2026-06-25 18:00,,,"G-403",N,GIT_LOG
G-405,,실제 AI Provider 호출 검증,공동 또는 확인 필요,BLOCKED,,,2026-06-25 18:00,2026-06-25 22:00,"G-404;G-703",N,MANUAL_CONFIRMATION_NEEDED
G-406,,러닝 기능 회귀 검증,팀원 B,UNVERIFIED,,,2026-06-25 20:00,2026-06-26 01:00,"G-402;G-702",N,ASSUMPTION
G-501,,Spotify Service OAuth Export 내부 로직,팀원 A,DONE,2026-06-19 09:00,2026-06-20 18:00,,,"G-101;G-201;G-301",N,GIT_LOG
G-502,,Spotify API와 Vue UI 연결,팀원 B,DONE,2026-06-22 09:00,2026-06-24 18:00,,,"G-501;G-601",N,GIT_LOG
G-503,,Spotify metadata와 import export 개선,공동 또는 확인 필요,DONE,2026-06-24 09:00,2026-06-24 18:00,,,"G-502",N,GIT_LOG
G-504,,실제 Spotify OAuth 검증,공동 또는 확인 필요,BLOCKED,,,2026-06-25 18:00,2026-06-25 23:00,"G-502;G-703",N,MANUAL_CONFIRMATION_NEEDED
G-505,,실제 Spotify Import Export 검증,공동 또는 확인 필요,BLOCKED,,,2026-06-25 21:00,2026-06-26 02:00,"G-504",N,MANUAL_CONFIRMATION_NEEDED
G-601,,Vue Router와 API 기반 구축,팀원 B,DONE,2026-06-22 09:00,2026-06-22 18:00,,,"G-004",N,GIT_LOG
G-602,,주요 Vue 화면 구현과 UI 개선,팀원 B,DONE,2026-06-22 09:00,2026-06-25 18:00,,,"G-601",N,GIT_LOG
G-603,,JSP Vue 혼합 흐름 개선,팀원 B,DONE,2026-06-22 09:00,2026-06-24 18:00,,,"G-102;G-601",N,GIT_LOG
G-604,,발표 시연 UI 점검,공동 또는 확인 필요,UNVERIFIED,,,2026-06-25 18:00,2026-06-26 03:00,"G-602",N,ASSUMPTION
G-605,,화면 설계서 작성,공동 또는 확인 필요,DONE,2026-06-25 17:00,2026-06-25 18:00,2026-06-25 17:00,2026-06-25 18:00,"G-602;G-803",N,PROJECT_DOCUMENT
G-701,,Backend Mapper Controller 테스트 구축,공동 또는 확인 필요,DONE,2026-06-19 09:00,2026-06-23 18:00,,,"G-003",N,GIT_LOG
G-702,,Running Playwright E2E 구축,팀원 B,DONE,2026-06-23 09:00,2026-06-23 18:00,,,"G-402;G-1102",N,GIT_LOG
G-703,,Docker Compose와 README 실행 환경 정리,공동 또는 확인 필요,DONE,2026-06-24 09:00,2026-06-24 18:00,,,"G-002;G-601",N,GIT_LOG
G-704,,Frontend build 재검증,팀원 B,DONE,2026-06-25 09:00,2026-06-25 14:00,,,"G-602",N,PROJECT_DOCUMENT
G-705,,Java 25 Backend 전체 테스트 재실행,공동 또는 확인 필요,BLOCKED,,,2026-06-25 18:00,2026-06-25 23:00,"G-002",N,MANUAL_CONFIRMATION_NEEDED
G-706,,Docker 전체 기동 검증,공동 또는 확인 필요,UNVERIFIED,,,2026-06-25 22:00,2026-06-26 03:00,"G-703",N,ASSUMPTION
G-707,,전체 브라우저 수동 검증,공동 또는 확인 필요,UNVERIFIED,,,2026-06-26 00:00,2026-06-26 06:00,"G-604;G-706",N,ASSUMPTION
G-801,,근거 데이터 요구사항 Use Case ERD 작성,공동 또는 확인 필요,DONE,2026-06-25 09:00,2026-06-25 14:00,,,"G-001",N,PROJECT_DOCUMENT
G-802,,WBS 작성,공동 또는 확인 필요,DONE,2026-06-25 14:00,2026-06-25 15:00,,,"G-801",N,PROJECT_DOCUMENT
G-803,,Gantt Chart 작성,공동 또는 확인 필요,DONE,2026-06-25 15:00,2026-06-25 17:00,2026-06-25 15:00,2026-06-25 17:00,"G-802",N,PROJECT_DOCUMENT
G-804,,발표 시연 체크리스트 확정,공동 또는 확인 필요,IN_PROGRESS,,,2026-06-26 03:00,2026-06-26 07:00,"G-707",N,ASSUMPTION
G-805,,최종 발표 리허설,공동 또는 확인 필요,NOT_STARTED,,,2026-06-26 07:00,2026-06-26 08:30,"G-804",N,ASSUMPTION
G-806,,최종 발표 시작,공동 또는 확인 필요,NOT_STARTED,,,2026-06-26 09:00,2026-06-26 09:00,"G-805",Y,ASSUMPTION
